# Metasepi Project

Schedule from Planner, 2014-05-12 to 2016-06-29.

## Calendars

- デフォルト: Mon-Fri 08:00-12:00, 13:00-17:00; Sat-Sun off.

## Schedule

| ID | WBS | Task | Type | Duration | Start | Finish | Predecessors | Constraint | Work |
| --- | --- | --- | --- | --- | --- | --- | --- | --- | --- |
| 1 | 1 | **ATS demo on tiny CPU** |  |  | 2014-05-12 | 2014-05-26 |  |  | 88h |
| 2 | 1.1 | AVR support to ATS |  |  | 2014-05-12 | 2014-05-20 |  |  | 51h |
| 3 | 1.2 | ARM support to ATS |  |  | 2014-05-20 | 2014-05-26 | 2 |  | 37h |
| 4 | 2 | **Translate ATS doc** |  |  | 2014-05-12 | 2015-03-18 |  |  | 1784h |
| 5 | 2.1 | ATS2TUTORIAL |  |  | 2014-05-12 | 2014-05-26 |  |  | 88h |
| 6 | 2.2 | INT2PROGINATS |  |  | 2014-05-27 | 2014-06-20 | 5 |  | 152h |
| 7 | 2.3 | ATS Paper |  |  | 2014-06-23 | 2014-08-12 | 6 |  | 291.5h |
| 8 | 2.4 | Wiki |  |  | 2014-08-12 | 2014-09-23 | 7 |  | 240h |
| 9 | 2.5 | BLUISH CODER |  |  | 2014-09-23 | 2015-02-03 | 8 |  | 760.5h |
| 10 | 2.6 | DML Paper |  |  | 2015-02-03 | 2015-03-18 | 9 |  | 252h |
| 11 | 3 | **Translate Metasepi blog** |  |  | 2014-05-27 | 2014-08-22 | 5 |  | 512h |
| 12 | 3.1 | Translate past entries |  |  | 2014-05-27 | 2014-08-22 |  |  | 512h |
| 13 | 4 | OSC@Nagoya | milestone | 0d | 2014-07-04 | 2014-07-04 |  | must start on 2014-07-04 |  |
| 14 | 5 | OSC@Kansai | milestone | 0d | 2014-08-01 | 2014-08-01 |  | must start on 2014-08-01 |  |
| 15 | 6 | Haskell Symposium | milestone | 0d | 2014-09-04 | 2014-09-04 | 11 | must start on 2014-09-04 |  |
| 16 | 7 | OSC@Tokyo | milestone | 0d | 2014-10-20 | 2014-10-18 |  | must start on 2014-10-18 |  |
| 17 | 8 | **Lifegame on FSM-55** |  |  | 2014-10-20 | 2015-02-18 | 16 |  | 697.5h |
| 18 | 8.1 | Setup gdbserver |  |  | 2014-10-20 | 2014-11-07 |  |  | 120h |
| 19 | 8.2 | Snatch FSM-55 |  |  | 2014-11-10 | 2014-12-31 | 18 |  | 297.5h |
| 20 | 8.3 | Lifegame on POSIX |  |  | 2014-12-31 | 2015-01-21 | 19 |  | 120h |
| 21 | 8.4 | Lifegame on FSM-55 |  |  | 2015-01-21 | 2015-02-18 | 20 |  | 160h |
| 22 | 9 | **FSM-55 from PCB** |  |  | 2014-10-20 | 2014-12-30 | 16 |  | 416h |
| 23 | 9.1 | Prepare the parts |  |  | 2014-10-20 | 2014-11-25 |  |  | 216h |
| 24 | 9.2 | Understand reflow |  |  | 2014-11-26 | 2014-12-09 | 23 |  | 80h |
| 25 | 9.3 | Make some boards |  |  | 2014-12-10 | 2014-12-23 | 24 |  | 80h |
| 26 | 9.4 | Schedule fpiot meetup |  |  | 2014-12-24 | 2014-12-30 | 25 |  | 40h |

| ID | WBS | Task | Start | Finish | Predecessors | Work |
| --- | --- | --- | --- | --- | --- | --- |
| 27 | 10 | **1wire protocol** | 2015-02-18 | 2015-06-24 | 22, 17 | 720h |
| 28 | 10.1 | Hardware design | 2015-02-18 | 2015-04-01 |  | 240h |
| 29 | 10.2 | Single network | 2015-04-01 | 2015-05-13 | 28 | 240h |
| 30 | 10.3 | Sequence network | 2015-05-13 | 2015-06-24 | 29 | 240h |
| 31 | 11 | **Square network** | 2015-06-24 | 2015-12-09 | 27 | 960h |
| 32 | 11.1 | Hardware design | 2015-06-24 | 2015-08-05 |  | 240h |
| 33 | 11.2 | Single network | 2015-08-05 | 2015-09-16 | 32 | 240h |
| 34 | 11.3 | Network simulator | 2015-09-16 | 2015-10-28 | 33 | 240h |
| 35 | 11.4 | Multiple network | 2015-10-28 | 2015-12-09 | 34 | 240h |
| 36 | 12 | **Setup to snatch Linux** | 2015-12-09 | 2016-02-22 | 31 | 424h |
| 37 | 12.1 | Setup raspberrypi | 2015-12-09 | 2016-01-25 |  | 264h |
| 38 | 12.2 | Setup ATS config | 2016-01-25 | 2016-02-08 | 37 | 80h |
| 39 | 12.3 | Choose snatch target | 2016-02-08 | 2016-02-22 | 38 | 80h |
| 40 | 13 | **Web framework** | 2016-02-22 | 2016-05-02 | 36 | 400h |
| 41 | 13.1 | On POSIX | 2016-02-22 | 2016-03-14 |  | 120h |
| 42 | 13.2 | On Arduino | 2016-03-14 | 2016-04-04 | 41 | 120h |
| 43 | 13.3 | Wiki application | 2016-04-04 | 2016-05-02 | 42 | 160h |
| 44 | 14 | **ATS package manager** | 2016-05-02 | 2016-06-01 | 40 | 176h |
| 45 | 14.1 | Understand opam design | 2016-05-02 | 2016-05-23 |  | 120h |
| 46 | 14.2 | Get design for ATS | 2016-05-23 | 2016-06-01 | 45 | 56h |
| 47 | 15 | Parsec on ATS | 2016-06-01 | 2016-06-29 | 44 | 160h |
